# 软件开发

How a schedule from MS Project changed from version to version. A marks actual dates.

## Version 1 (data date 2017-07-03, saved 2017-07-03)

Note of the change: [添加] 视频素材图片、ELP_Project

| ID | WBS | Task | Duration | Start | Finish | Predecessors | Complete | Total float | Constraint |
| --- | --- | --- | --- | --- | --- | --- | --- | --- | --- |
| 1 | 1 | **项目启动** | 5d | 2017-07-01 A | 2017-07-07 |  | 22% | 16d |  |
| 2 |  | 明确开发目的 | 2d | 2017-07-01 A | 2017-07-04 |  | 50% | 18d |  |
| 3 |  | 小组人员确定和制定管理办法 | 2d | 2017-07-02 A | 2017-07-04 |  | 50% | 0d |  |
| 4 |  | 小组第一次会议 | 2d | 2017-07-03 A | 2017-07-06 | 3 |  | 16d |  |
| 5 |  | 分析可行性 | 1d | 2017-07-07 | 2017-07-07 | 4 |  | 16d |  |
| 6 |  | 确定功能点 | 1d | 2017-07-05 | 2017-07-05 | 2 |  | 18d |  |
| 7 |  | 选择开发语言、工具 | 1d | 2017-07-07 | 2017-07-07 | 4 |  | 16d |  |
| 8 |  | 启动阶段结束 | 0d | 2017-07-07 | 2017-07-07 |  |  | 17d | start no earlier than 2017-07-07 |
| 9 | 2 | **项目规划** | 5d | 2017-07-02 A | 2017-07-07 |  | 40% | 16d |  |
| 10 |  | 确定项目计划及需求 | 8h | 2017-07-03 A | 2017-07-03 A |  | 100% |  |  |
| 11 |  | 组织管理细则 | 1d | 2017-07-02 A | 2017-07-03 A |  | 100% |  | start no earlier than 2017-04-11 |
| 12 |  | 沟通管理细则 | 1d | 2017-07-05 | 2017-07-05 | 11 |  |  | start no earlier than 2017-07-05 |
| 13 |  | 配置管理细则 | 1d | 2017-07-06 | 2017-07-06 | 12 |  | 16d | start no earlier than 2016-11-02 |
| 14 |  | 过程质量保证管理细则 | 1d | 2017-07-07 | 2017-07-07 | 13 |  | 16d | start no earlier than 2016-11-02 |
| 15 |  | 明确开发难点 | 0d | 2017-07-06 A | 2017-07-06 |  | 99% | 18d | start no earlier than 2017-04-14 |
| 16 |  | 项目规划完成 | 0d | 2017-07-06 | 2017-07-06 | 15 |  | 18d | finish no earlier than 2017-04-14 |
| 17 | 3 | **界面设计** | 6d | 2017-07-07 | 2017-07-14 |  |  |  |  |
| 18 | 3.1 | **Web端界面设计** | 6d | 2017-07-07 | 2017-07-14 |  |  | 11d |  |
| 19 |  | 明确设计目的 | 1d | 2017-07-07 | 2017-07-07 |  |  | 11d |  |
| 20 |  | 确定设计功能点 | 2d | 2017-07-10 | 2017-07-11 | 19 |  | 11d |  |
| 21 |  | 明确页面数目 | 1d | 2017-07-12 | 2017-07-12 | 20 |  | 11d |  |
| 22 |  | 页面元素设计 | 1d | 2017-07-13 | 2017-07-13 | 21 |  | 11d |  |
| 23 |  | 根据反馈修改功能点 | 1d | 2017-07-14 | 2017-07-14 | 22 |  | 11d |  |
| 24 |  | Web端设计工作完成 | 0d | 2017-07-14 | 2017-07-14 |  |  | 12d | start no earlier than 2017-07-14 |
| 25 | 3.2 | **手机（微信）端界面设计** | 6d | 2017-07-07 | 2017-07-14 |  |  |  |  |
| 26 |  | 明确设计目的 | 1d | 2017-07-07 | 2017-07-07 |  |  | 11d |  |
| 27 |  | 确定设计功能点 | 1d | 2017-07-10 | 2017-07-10 | 26 |  | 11d |  |
| 28 |  | 明确页面数目 | 1d | 2017-07-11 | 2017-07-11 | 27 |  | 11d |  |
| 29 |  | 页面元素设计 | 1d | 2017-07-12 | 2017-07-12 | 28 |  | 11d |  |
| 30 |  | 根据反馈修改功能点 | 1d | 2017-07-13 | 2017-07-13 | 29 |  | 11d |  |
| 31 |  | 手机（微信）端设计工作完成 | 1d | 2017-07-14 | 2017-07-14 | 30 |  | 11d |  |
| 32 |  | 小组第二次会议 | 0d | 2017-07-14 | 2017-07-14 |  |  | 12d | start no earlier than 2017-07-14 |
| 33 | 5 | **开发** | 14d | 2017-07-07 A | 2017-07-26 |  | 16% |  |  |
| 34 | 5.1 | **Web端和手机（微信）端前端开发** | 11d | 2017-07-10 A | 2017-07-24 |  | 11% | 5d |  |
| 35 |  | 页面框架搭建 | 1d | 2017-07-10 A | 2017-07-10 |  | 99% | 7d |  |
| 36 |  | 数据本地储存模块开发 | 1d | 2017-07-11 | 2017-07-11 | 35 |  | 7d |  |
| 37 |  | 数据本地获取模块开发 | 1d | 2017-07-12 | 2017-07-12 | 36 |  | 7d |  |
| 38 |  | 设计引擎模块、桩模块，白盒测试 | 0d | 2017-07-12 A | 2017-07-12 | 37 | 99% | 7d |  |
| 39 |  | 页面元素添加 | 1d | 2017-07-13 | 2017-07-13 | 38 |  | 7d |  |
| 40 |  | 多页面数据传递与跳转 | 0d | 2017-07-13 A | 2017-07-13 | 39 | 99% | 7d |  |
| 41 |  | 登录页面设计 | 1d | 2017-07-14 | 2017-07-14 | 40 |  | 7d |  |
| 42 |  | 前后端初步整合 | 0d | 2017-07-14 A | 2017-07-14 | 41 | 99% | 7d |  |
| 43 |  | 拆除桩模块、引擎模块，尝试获取后端数据 | 1d | 2017-07-17 | 2017-07-17 | 42 |  | 7d |  |
| 44 |  | 服务器数据获取模块开发，白盒测试 | 0d | 2017-07-14 A | 2017-07-17 | 43 | 99% | 7d |  |
| 45 |  | 用户类型分配模块开发 | 1d | 2017-07-18 | 2017-07-18 | 44 |  | 7d |  |
| 46 |  | 管理员界面模块、元素整合，白盒测试 | 1d | 2017-07-19 | 2017-07-19 | 45 |  | 7d |  |
| 47 |  | 前后端整合 | 0d | 2017-07-21 A | 2017-07-21 | 46 | 99% | 5d |  |
| 48 |  | 功能测试 | 1d | 2017-07-24 | 2017-07-24 | 47 |  | 5d |  |
| 49 |  | 前端开发完成 | 0d | 2017-07-24 | 2017-07-24 | 48 |  | 5d |  |
| 50 | 5.2 | **后端开发** | 13d | 2017-07-07 A | 2017-07-25 |  | 18% | 4d |  |
| 51 | 5.2.1 | **Web端后端开发** | 13d | 2017-07-07 A | 2017-07-25 |  | 19% | 4d |  |
| 52 |  | 搭建SSH框架 | 5d | 2017-07-07 | 2017-07-13 |  |  | 0d |  |
| 53 |  | 构造数据字典 | 2d | 2017-07-14 | 2017-07-17 | 52 |  | 0d |  |
| 54 |  | E-R图（实体-联系图） | 2d | 2017-07-18 | 2017-07-19 | 53 |  | 0d |  |
| 55 |  | 构造数据库 | 2d | 2017-07-20 | 2017-07-21 | 54 |  | 0d |  |
| 56 |  | 处理数据库映射以及请求操作 | 5d | 2017-07-18 A | 2017-07-25 | 55 | 60% | 4d |  |
| 57 |  | 后端开发完成 | 0d | 2017-07-25 | 2017-07-25 | 56 |  | 4d |  |
| 58 | 5.2.2 | **手机（微信）端后端开发** | 11d | 2017-07-10 A | 2017-07-24 |  | 17% | 5d |  |
| 59 |  | 手机（微信）端数据库映射以及请求操作 | 6d | 2017-07-10 A | 2017-07-17 |  | 17% | 10d |  |
| 60 |  | 手机（微信）端消息推送、接受连接处理 | 6d | 2017-07-16 A | 2017-07-24 |  | 17% | 5d |  |
| 61 |  | 小组第三次会议 | 0d | 2017-07-24 | 2017-07-24 |  |  | 6d | start no earlier than 2017-07-24 |
| 62 | 7 | **测试** | 14d | 2017-07-07 A | 2017-07-26 |  | 6% |  |  |
| 63 | 7.1 | **单元测试** | 11d | 2017-07-07 | 2017-07-21 |  |  | 6d |  |
| 64 |  | 审阅模块化代码 | 2d | 2017-07-07 | 2017-07-10 |  |  | 6d |  |
| 65 |  | 测试组件模块是否符合产品规范 | 1d | 2017-07-11 | 2017-07-11 | 64 |  | 6d |  |
| 66 |  | 找出不符合产品规范的异常情况 | 3d | 2017-07-12 | 2017-07-14 | 65 |  | 6d |  |
| 67 |  | 修改代码 | 3d | 2017-07-17 | 2017-07-19 | 66 |  | 6d |  |
| 68 |  | 重新测试经过修改的代码 | 2d | 2017-07-20 | 2017-07-21 | 67 |  | 6d |  |
| 69 |  | 单元测试完成 | 0d | 2017-07-21 | 2017-07-21 | 68 |  | 6d |  |
| 70 |  | 小组第四次会议 | 0d | 2017-07-21 | 2017-07-21 |  |  | 0d | start no earlier than 2017-07-21 |

| ID | WBS | Task | Duration | Start | Finish | Predecessors | Complete | Total float |
| --- | --- | --- | --- | --- | --- | --- | --- | --- |
| 71 | 7.2 | **整体测试** | 4d | 2017-07-21 A | 2017-07-26 |  | 20% | 3d |
| 72 |  | 测试模块集成情况 | 1d | 2017-07-21 | 2017-07-21 | 70 |  | 0d |
| 73 |  | 找出不符合规范的异常情况 | 1d | 2017-07-24 | 2017-07-24 | 72 |  | 0d |
| 74 |  | 修改代码 | 1d | 2017-07-25 | 2017-07-25 | 73 |  | 0d |
| 75 |  | 重新测试经过修改的代码 | 2d | 2017-07-21 A | 2017-07-26 | 74 | 50% | 3d |
| 76 |  | 整体测试完成 | 0d | 2017-07-26 | 2017-07-26 | 75 |  | 3d |
| 77 | 8 | **项目结束回顾** | 4d | 2017-07-26 | 2017-07-31 |  |  |  |
| 78 |  | 设计答辩文档 | 1d | 2017-07-26 | 2017-07-26 |  |  | 1d |
| 79 |  | 回顾完成 | 1d | 2017-07-27 | 2017-07-27 | 78 |  | 1d |
| 80 |  | 项目结尾回顾完成 | 1d | 2017-07-28 | 2017-07-28 | 79 |  | 1d |
| 81 |  | 小组第五次会议 | 0d | 2017-07-26 | 2017-07-26 |  |  | 4d |

## Version 2 (data date 2017-07-07, saved 2017-07-07)

Note of the change: [添加] 可行性分析内容、各个技术Logo [修改]部分内容

Last finish stays 2017-07-31. Complete tasks 2 → 16.

Changed:

| ID | Task | Start | Finish | Complete | Total float |
| --- | --- | --- | --- | --- | --- |
| 1 | **项目启动** |  | 2017-07-07 A | 22% → 100% | 16d → none |
| 2 | 明确开发目的 |  | 2017-07-04 A | 50% → 100% | 18d → none |
| 3 | 小组人员确定和制定管理办法 |  | 2017-07-04 A | 50% → 100% | 0d → none |
| 4 | 小组第一次会议 |  | 2017-07-06 A | 0% → 100% | 16d → none |
| 5 | 分析可行性 | 2017-07-07 A | 2017-07-07 A | 0% → 100% | 16d → none |
| 6 | 确定功能点 | 2017-07-05 A | 2017-07-05 A | 0% → 100% | 18d → none |
| 7 | 选择开发语言、工具 | 2017-07-07 A | 2017-07-07 A | 0% → 100% | 16d → none |
| 8 | 启动阶段结束 | 2017-07-07 A | 2017-07-07 A | 0% → 100% | 17d → none |
| 9 | **项目规划** |  | 2017-07-07 A | 40% → 100% | 16d → none |
| 12 | 沟通管理细则 | 2017-07-05 A | 2017-07-05 A | 0% → 100% |  |
| 13 | 配置管理细则 | 2017-07-06 A | 2017-07-06 A | 0% → 100% | 16d → none |
| 14 | 过程质量保证管理细则 | 2017-07-07 A | 2017-07-07 A | 0% → 100% | 16d → none |
| 15 | 明确开发难点 |  | 2017-07-06 A | 99% → 100% | 18d → none |
| 16 | 项目规划完成 | 2017-07-06 A | 2017-07-06 A | 0% → 100% | 18d → none |
| 17 | **界面设计** | 2017-07-07 A |  | 0% → 17% |  |
| 18 | **Web端界面设计** | 2017-07-07 A |  | 0% → 17% |  |
| 19 | 明确设计目的 | 2017-07-07 A | 2017-07-07 A | 0% → 100% | 11d → none |
| 25 | **手机（微信）端界面设计** | 2017-07-07 A |  | 0% → 17% |  |
| 26 | 明确设计目的 | 2017-07-07 A | 2017-07-07 A | 0% → 100% | 11d → none |
| 33 | **开发** |  |  | 16% → 19% |  |
| 50 | **后端开发** |  |  | 18% → 21% |  |
| 51 | **Web端后端开发** |  |  | 19% → 25% |  |
| 52 | 搭建SSH框架 | 2017-07-07 A |  | 0% → 20% |  |
| 62 | **测试** |  |  | 6% → 13% |  |
| 63 | **单元测试** | 2017-07-07 A |  | 0% → 9% |  |
| 64 | 审阅模块化代码 | 2017-07-07 A |  | 0% → 50% |  |
